# 自动驾驶管理系统

Schedule from a web Gantt chart, 2026-03-25 to 2026-03-25.
Saturdays and Sundays are off

## Schedule

| ID | WBS | Task | Duration | Start | Finish |
| --- | --- | --- | --- | --- | --- |
| 2 | 1 | **AVP平台** | 1d | 2026-03-25 | 2026-03-25 |
| 3 | 1.1 | **代客泊车预约系统 （移动端）** | 1d | 2026-03-25 | 2026-03-25 |
| 4 | 1.1.1 | 首页 | 1d | 2026-03-25 | 2026-03-25 |
| 5 | 1.1.2 | 登录注册 | 1d | 2026-03-25 | 2026-03-25 |
| 6 | 1.1.3 | **个人中心** | 1d | 2026-03-25 | 2026-03-25 |
| 7 | 1.1.3.1 | 车辆管理 | 1d | 2026-03-25 | 2026-03-25 |
| 8 | 1.1.3.2 | 预警管理 | 1d | 2026-03-25 | 2026-03-25 |
| 9 | 1.1.3.3 | 泊车记录 | 1d | 2026-03-25 | 2026-03-25 |
| 10 | 1.1.3.4 | 召车记录 | 1d | 2026-03-25 | 2026-03-25 |
